# 开发组近期开发计划-201108

Schedule from MS Project, 2011-07-26 to 2011-08-19.
hualu

## Calendars

- 标准: Mon-Fri 08:00-12:00, 13:00-17:00; Sat-Sun off.

## Resources

| Resource |
| --- |
| 詹欢欢 |
| 范强 |
| 宁桂鑫 |
| 张亮 |
| 田志强 |
| 樊志霞 |
| 蒋思玉 |
| 乐天 |
| 张远 |

## Schedule

| ID | WBS | Task | Duration | Start | Finish | Predecessors | Total slack | Free slack | Constraint | Resources | Work |
| --- | --- | --- | --- | --- | --- | --- | --- | --- | --- | --- | --- |
| 1 | 1 | **投诉系统** | 10d? | 2011-08-01 08:00 | 2011-08-12 17:00 |  | 5d |  |  |  | 80h |
| 2 | 1.1 | 集团审核结果与常用审核意见联动 | 3d? | 2011-08-01 08:00 | 2011-08-03 17:00 |  | 1d | 0d | start no earlier than 2011-08-01 08:00 | 詹欢欢 | 24h |
| 3 | 1.2 | 投诉系统网络投诉界面增加填写控制和界面提示 | 5d? | 2011-08-04 08:00 | 2011-08-10 17:00 | 2 | 5d | 0d | start no earlier than 2011-08-04 08:00 | 詹欢欢 | 40h |
| 4 | 1.3 | 申诉单处理省调整详细设计 | 2d? | 2011-08-11 08:00 | 2011-08-12 17:00 | 3 | 5d |  | start no earlier than 2011-08-11 08:00 | 詹欢欢 | 16h |
| 5 | 2 | **ICT** | 12d? | 2011-08-04 08:00 | 2011-08-19 17:00 |  | 0d |  |  |  | 96h |
| 6 | 2.1 | BUG修改 | 12d? | 2011-08-04 08:00 | 2011-08-19 17:00 |  | 0d |  | finish no earlier than 2011-08-19 17:00 | 张远 | 96h |
| 8 | 3 | **政企网厅** | 17d | 2011-07-26 08:00 | 2011-08-17 17:00 |  | 2d |  |  |  | 184.8h |
| 9 | 3.1 | 文件接口 | 0.3d | 2011-07-26 08:00 | 2011-07-26 10:24 |  | 17.8d | 1.4d | start no earlier than 2011-07-26 08:00 | 范强 | 2.4h |
| 10 | 3.2 | 客户查询接口 | 0.3d | 2011-07-27 14:36 | 2011-07-27 17:00 | 9 | 16.4d | 0d | finish no earlier than 2011-07-27 17:00 | 范强 | 2.4h |
| 11 | 3.3 | 电路进度报告查询接口 | 0.3d | 2011-07-26 08:00 | 2011-07-26 10:24 |  | 17.8d | 0d | start no earlier than 2011-07-26 08:00 | 宁桂鑫 | 2.4h |
| 12 | 3.4 | 电路进度报告下载接口 | 0.3d | 2011-07-26 10:24 | 2011-07-26 13:48 | 11 | 17.8d | 0d |  | 宁桂鑫 | 2.4h |
| 13 | 3.5 | 订单实施报告查询接口 | 0.3d | 2011-07-26 13:48 | 2011-07-26 16:12 | 12 | 17.8d | 0d |  | 宁桂鑫 | 2.4h |
| 14 | 3.6 | 订单实施报告清单下载接口 | 0.3d | 2011-07-26 16:12 | 2011-07-27 09:36 | 13 | 17.8d |  |  | 宁桂鑫 | 2.4h |
| 15 | 3.7 | NNI路由告警条目查询接口 | 0.3d | 2011-07-26 08:00 | 2011-07-26 10:24 |  | 17.8d | 0d | start no earlier than 2011-07-26 08:00 | 张亮 | 2.4h |
| 16 | 3.8 | 查询合同协议接口 | 0.3d | 2011-07-26 10:24 | 2011-07-26 13:48 | 15 | 17.8d | 0d |  | 张亮 | 2.4h |
| 17 | 3.9 | 查询在用业务接口 | 0.3d | 2011-07-26 08:00 | 2011-07-26 10:24 |  | 17.5d | 0d | start no earlier than 2011-07-26 08:00 | 田志强 | 2.4h |
| 18 | 3.10 | 查询在用业务的业务名称接口 | 0.3d | 2011-07-26 10:24 | 2011-07-26 13:48 | 17 | 17.5d | 0d |  | 田志强 | 2.4h |
| 19 | 3.11 | 查询办理业务接口 | 0.3d | 2011-07-26 13:48 | 2011-07-26 16:12 | 18 | 17.5d | 0d |  | 田志强 | 2.4h |
| 20 | 3.12 | 查询办理业务的业务名称接口 | 0.3d | 2011-07-26 16:12 | 2011-07-27 09:36 | 19 | 17.5d | 0d |  | 田志强 | 2.4h |
| 21 | 3.13 | 查询办理业务不同类型产品个数接口 | 0.3d | 2011-07-27 09:36 | 2011-07-27 12:00 | 20 | 17.5d |  |  | 田志强 | 2.4h |
| 22 | 3.14 | 查询服务团队接口 | 0.3d | 2011-07-28 08:00 | 2011-07-28 10:24 | 10 | 16.4d | 0d |  | 范强 | 2.4h |
| 23 | 3.15 | 查询客户联系人信息 | 0.3d | 2011-07-26 13:48 | 2011-07-26 16:12 | 16 | 17.8d | 0d |  | 张亮 | 2.4h |
| 24 | 3.16 | 修改客户联系人信息 | 0.3d | 2011-07-26 16:12 | 2011-07-27 09:36 | 23 | 17.8d |  |  | 张亮 | 2.4h |
| 25 | 3.17 | 业务FAQ查询 | 0.3d | 2011-07-28 10:24 | 2011-07-28 13:48 | 22 | 16.4d |  |  | 范强 | 2.4h |

| ID | WBS | Task | Duration | Start | Finish | Predecessors | Total slack | Free slack | Constraint | Resources | Work |
| --- | --- | --- | --- | --- | --- | --- | --- | --- | --- | --- | --- |
| 26 | 3.18 | **WAC** | 6d | 2011-08-10 08:00 | 2011-08-17 17:00 |  | 2d |  |  |  | 52h |
| 27 | 3.18.1 | WAC项目查询 | 0.5d | 2011-08-10 08:00 | 2011-08-10 12:00 |  | 2.5d | 0d | start no earlier than 2011-08-10 08:00 | 范强 | 4h |
| 28 | 3.18.2 | WAC电路查询 | 0.5d | 2011-08-10 13:00 | 2011-08-10 17:00 | 27 | 2.5d | 0d |  | 范强 | 4h |
| 29 | 3.18.3 | 新增WAC项目 | 0.5d | 2011-08-11 08:00 | 2011-08-11 12:00 | 28 | 2.5d | 0d |  | 范强 | 4h |
| 30 | 3.18.4 | 新增WAC电路 | 0.5d | 2011-08-11 13:00 | 2011-08-11 17:00 | 29 | 2.5d | 0d |  | 范强 | 4h |
| 31 | 3.18.5 | 显示可供变更或拆机电路列表 | 0.5d | 2011-08-12 08:00 | 2011-08-12 12:00 | 30 | 2.5d | 0d |  | 范强 | 4h |
| 32 | 3.18.6 | 所选择将要变更或拆机电路的信息 | 0.5d | 2011-08-12 13:00 | 2011-08-12 17:00 | 31 | 2.5d | 0d |  | 范强 | 4h |
| 33 | 3.18.7 | WAC变更 | 0.5d | 2011-08-15 08:00 | 2011-08-15 12:00 | 32 | 2.5d | 0d |  | 范强 | 4h |
| 34 | 3.18.8 | WAC拆机 | 0.5d | 2011-08-15 13:00 | 2011-08-15 17:00 | 33 | 2.5d | 0d |  | 范强 | 4h |
| 35 | 3.18.9 | WAC提交内部审核 | 0.5d | 2011-08-16 08:00 | 2011-08-16 12:00 | 34 | 2.5d | 0d |  | 范强 | 4h |
| 36 | 3.18.10 | WAC内部审核通过并提交CRM | 0.5d | 2011-08-16 13:00 | 2011-08-16 17:00 | 35 | 2.5d | 0d |  | 范强 | 4h |
| 37 | 3.18.11 | WAC内部审核不通过 | 0.5d | 2011-08-17 08:00 | 2011-08-17 12:00 | 36 | 2.5d |  |  | 范强 | 4h |
| 38 | 3.18.12 | WAC全网数据导出 | 0.5d | 2011-08-17 08:00 | 2011-08-17 12:00 |  | 2d | 0d | start no earlier than 2011-08-17 08:00 | 宁桂鑫 | 4h |
| 39 | 3.18.13 | WAC账务数据管理 | 0.5d | 2011-08-17 13:00 | 2011-08-17 17:00 | 38 | 2d |  |  | 宁桂鑫 | 4h |
| 40 | 3.19 | **B端** | 5.5d | 2011-08-10 08:00 | 2011-08-17 12:00 |  | 2d |  |  |  | 48h |
| 41 | 3.19.1 | B端询价菜单显示数量查询接口 | 0.5d | 2011-08-10 08:00 | 2011-08-10 12:00 |  | 2.5d | 0d | start no earlier than 2011-08-10 08:00 | 蒋思玉 | 4h |
| 42 | 3.19.2 | B端询价查询接口 | 0.5d | 2011-08-10 13:00 | 2011-08-10 17:00 | 41 | 2.5d | 0d |  | 蒋思玉 | 4h |
| 43 | 3.19.3 | B端询价报价历史查询接口 | 0.5d | 2011-08-11 08:00 | 2011-08-11 12:00 | 42 | 2.5d | 0d |  | 蒋思玉 | 4h |
| 44 | 3.19.4 | B端询价电路信息查询接口 | 0.5d | 2011-08-11 13:00 | 2011-08-11 17:00 | 43 | 2.5d | 0d |  | 蒋思玉 | 4h |
| 45 | 3.19.5 | B端询价电路询价详细信息查询接口 | 0.5d | 2011-08-12 08:00 | 2011-08-12 12:00 | 44 | 2.5d | 0d |  | 蒋思玉 | 4h |
| 46 | 3.19.6 | B端询价电路询价历史查看接口 | 0.5d | 2011-08-12 13:00 | 2011-08-12 17:00 | 45 | 2.5d | 0d |  | 蒋思玉 | 4h |
| 47 | 3.19.7 | B端询价添加/修改接口 | 0.5d | 2011-08-15 08:00 | 2011-08-15 12:00 | 46 | 2.5d | 0d |  | 蒋思玉 | 4h |
| 48 | 3.19.8 | B端询价订单提交/删除接口 | 0.5d | 2011-08-15 13:00 | 2011-08-15 17:00 | 47 | 2.5d | 0d |  | 蒋思玉 | 4h |
| 49 | 3.19.9 | B端询价再次询价接口 | 0.5d | 2011-08-16 08:00 | 2011-08-16 12:00 | 48 | 2.5d | 0d |  | 蒋思玉 | 4h |
| 50 | 3.19.10 | B端询价获取所有导出项目接口 | 0.5d | 2011-08-16 13:00 | 2011-08-16 17:00 | 49 | 2.5d | 0d | start no earlier than 2011-08-10 08:00 | 蒋思玉 | 4h |
| 51 | 3.19.11 | B端询价数据导出接口 | 0.5d | 2011-08-17 08:00 | 2011-08-17 12:00 | 50 | 2.5d |  | start no earlier than 2011-08-10 08:00 | 蒋思玉 | 4h |
| 52 | 3.19.12 | B端询统计接口 | 0.5d | 2011-08-10 08:00 | 2011-08-10 12:00 |  | 2d | 0d | start no earlier than 2011-08-10 08:00 | 乐天 | 4h |
| 53 | 3.20 | 客户经理查询接口 | 0.5d | 2011-08-10 13:00 | 2011-08-10 17:00 | 52 | 2d | 0d |  | 乐天 | 4h |

| ID | WBS | Task | Duration | Start | Finish | Predecessors | Total slack | Free slack | Constraint | Resources | Work |
| --- | --- | --- | --- | --- | --- | --- | --- | --- | --- | --- | --- |
| 54 | 3.21 | **商机** | 5d | 2011-08-11 08:00 | 2011-08-17 17:00 |  | 2d |  |  |  | 40h |
| 55 | 3.21.1 | **ICT商机** | 3.5d | 2011-08-11 08:00 | 2011-08-16 12:00 |  | 2d |  |  |  | 28h |
| 56 | 3.21.1.1 | 查询商机列表 | 0.5d | 2011-08-11 08:00 | 2011-08-11 12:00 | 53 | 2d | 0d |  | 乐天 | 4h |
| 57 | 3.21.1.2 | 查询商机详细信息 | 0.5d | 2011-08-11 13:00 | 2011-08-11 17:00 | 56 | 2d | 0d |  | 乐天 | 4h |
| 58 | 3.21.1.3 | 查询集成公司支撑信息 | 0.5d | 2011-08-12 08:00 | 2011-08-12 12:00 | 57 | 2d | 0d |  | 乐天 | 4h |
| 59 | 3.21.1.4 | 新增集成公司支撑信息 | 0.5d | 2011-08-12 13:00 | 2011-08-12 17:00 | 58 | 2d | 0d |  | 乐天 | 4h |
| 60 | 3.21.1.5 | 更新集成公司支撑信息 | 0.5d | 2011-08-15 08:00 | 2011-08-15 12:00 | 59 | 2d | 0d |  | 乐天 | 4h |
| 61 | 3.21.1.6 | 查询普通商机需求反馈列表 | 0.5d | 2011-08-15 13:00 | 2011-08-15 17:00 | 60 | 2d | 0d |  | 乐天 | 4h |
| 62 | 3.21.1.7 | 更新普通商机需求反馈 | 0.5d | 2011-08-16 08:00 | 2011-08-16 12:00 | 61 | 2d | 0d |  | 乐天 | 4h |
| 63 | 3.21.2 | **专业化团队支撑商机** | 1.5d | 2011-08-16 13:00 | 2011-08-17 17:00 |  | 2d |  |  |  | 12h |
| 64 | 3.21.2.1 | 查询专业化团队支撑商机反馈列表 | 0.5d | 2011-08-16 13:00 | 2011-08-16 17:00 | 62 | 2d | 0d |  | 乐天 | 4h |
| 65 | 3.21.2.2 | 新增专业化团队支撑商机反馈 | 0.5d | 2011-08-17 08:00 | 2011-08-17 12:00 | 64 | 2d | 0d |  | 乐天 | 4h |
| 66 | 3.21.2.3 | 查询专业化团队支撑商机的支撑人列表 | 0.5d | 2011-08-17 13:00 | 2011-08-17 17:00 | 65 | 2d |  |  | 乐天 | 4h |
| 67 | 4 | **事件管理** | 5d? | 2011-08-09 08:00 | 2011-08-15 17:00 |  | 4d |  |  |  | 118.4h |
| 68 | 4.1 | **个人信息功能** | 0.5d | 2011-08-09 08:00 | 2011-08-09 12:00 |  | 4.2d |  |  |  | 4h |
| 69 | 4.1.1 | 个人信息功能-增加数据项 | 0.5d | 2011-08-09 08:00 | 2011-08-09 12:00 |  | 4.2d | 0d | start no earlier than 2011-08-09 08:00 | 樊志霞 | 4h |
| 70 | 4.2 | **日常事件功能** | 4d? | 2011-08-09 08:00 | 2011-08-12 17:00 |  | 4d |  |  |  | 50.4h |
| 71 | 4.2.1 | 日常事件与个人信息功能关联 | 0.5d | 2011-08-09 13:00 | 2011-08-09 17:00 | 69 | 4.2d | 0d |  | 樊志霞 | 4h |
| 72 | 4.2.2 | 日常事件添加是否系统问题 | 0.5d | 2011-08-10 08:00 | 2011-08-10 12:00 | 71 | 4.2d | 0d |  | 樊志霞 | 4h |
| 73 | 4.2.3 | 日常事件与系统问题关联 | 1d? | 2011-08-09 08:00 | 2011-08-09 17:00 |  | 4d | 0d | start no earlier than 2011-08-09 08:00 | 田志强 | 8h |
| 74 | 4.2.4 | 增加未完成日常事件过滤条件 | 0.8d | 2011-08-10 13:00 | 2011-08-11 10:24 | 72 | 4.2d | 0d |  | 樊志霞 | 6.4h |
| 75 | 4.2.5 | 未完成日常事件增加编辑功能 | 1d? | 2011-08-10 08:00 | 2011-08-10 17:00 | 73 | 4d | 0d |  | 田志强 | 8h |
| 76 | 4.2.6 | 未完成日常事件删除功能 | 1d? | 2011-08-11 08:00 | 2011-08-11 17:00 | 75 | 4d | 0d |  | 田志强 | 8h |
| 77 | 4.2.7 | 导入模板增加数据项 | 1d? | 2011-08-12 08:00 | 2011-08-12 17:00 | 76 | 4d | 0d |  | 田志强 | 8h |
| 78 | 4.2.8 | 执行导入时增加页面遮罩功能 | 0.5d? | 2011-08-11 10:24 | 2011-08-11 15:24 | 74 | 4.2d | 0d |  | 樊志霞 | 4h |

| ID | WBS | Task | Duration | Start | Finish | Predecessors | Total slack | Free slack | Constraint | Resources | Work |
| --- | --- | --- | --- | --- | --- | --- | --- | --- | --- | --- | --- |
| 79 | 4.3 | **事件变更单功能** | 2.2d? | 2011-08-11 15:24 | 2011-08-15 17:00 |  | 4d |  |  |  | 16h |
| 80 | 4.3.1 | 增加数据项 | 0.5d? | 2011-08-11 15:24 | 2011-08-12 10:24 | 78 | 4.2d | 0d |  | 樊志霞 | 4h |
| 81 | 4.3.2 | 数据变更与系统问题关联 | 1d? | 2011-08-15 08:00 | 2011-08-15 17:00 | 77 | 4d |  |  | 田志强 | 8h |
| 82 | 4.3.3 | 修改变更单编号的显示 | 0.5d? | 2011-08-12 10:24 | 2011-08-12 15:24 | 80 | 4.2d | 0d |  | 樊志霞 | 4h |
| 83 | 4.4 | **系统BUG功能** | 0.5d? | 2011-08-12 15:24 | 2011-08-15 10:24 |  | 4.2d |  |  |  | 4h |
| 84 | 4.4.1 | 增加数据项 | 0.5d? | 2011-08-12 15:24 | 2011-08-15 10:24 | 82 | 4.2d | 0d |  | 樊志霞 | 4h |
| 85 | 4.5 | **统计与汇总功能** | 5d? | 2011-08-09 08:00 | 2011-08-15 17:00 |  | 4d |  |  |  | 40h |
| 86 | 4.5.1 | 统计功能 | 0.5d? | 2011-08-09 08:00 | 2011-08-09 12:00 |  | 4d | 0d | start no earlier than 2011-08-09 08:00 | 宁桂鑫 | 4h |
| 87 | 4.5.2 | 定时生成日报汇总文件 | 0.5d? | 2011-08-09 13:00 | 2011-08-09 17:00 | 86 | 4d | 0d |  | 宁桂鑫 | 4h |
| 88 | 4.5.3 | 下载日报汇总文件 | 0.5d? | 2011-08-10 08:00 | 2011-08-10 12:00 | 87 | 4d | 0d |  | 宁桂鑫 | 4h |
| 89 | 4.5.4 | 更新日报汇总文件 | 0.5d? | 2011-08-10 13:00 | 2011-08-10 17:00 | 88 | 4d | 0d |  | 宁桂鑫 | 4h |
| 90 | 4.5.5 | 生成周报汇总文件 | 0.5d? | 2011-08-11 08:00 | 2011-08-11 12:00 | 89 | 4d | 0d |  | 宁桂鑫 | 4h |
| 91 | 4.5.6 | 下载周报汇总文件 | 0.5d? | 2011-08-11 13:00 | 2011-08-11 17:00 | 90 | 4d | 0d |  | 宁桂鑫 | 4h |
| 92 | 4.5.7 | 更新周报汇总文件 | 0.5d? | 2011-08-12 08:00 | 2011-08-12 12:00 | 91 | 4d | 0d |  | 宁桂鑫 | 4h |
| 93 | 4.5.8 | 生成月报汇总文件 | 0.5d? | 2011-08-12 13:00 | 2011-08-12 17:00 | 92 | 4d | 0d |  | 宁桂鑫 | 4h |
| 94 | 4.5.9 | 下载月报汇总文件 | 0.5d? | 2011-08-15 08:00 | 2011-08-15 12:00 | 93 | 4d | 0d |  | 宁桂鑫 | 4h |
| 95 | 4.5.10 | 更新月报汇总文件 | 0.5d? | 2011-08-15 13:00 | 2011-08-15 17:00 | 94 | 4d |  |  | 宁桂鑫 | 4h |
| 96 | 4.6 | **系统中的BUG修改** | 0.5d | 2011-08-15 10:24 | 2011-08-15 15:24 |  | 4.2d |  |  |  | 4h |
| 97 | 4.6.1 | 咨询申告改为日常事件 | 0.2d | 2011-08-15 10:24 | 2011-08-15 12:00 | 84 | 4.2d | 0d |  | 樊志霞 | 1.6h |
| 98 | 4.6.2 | 变更单导入提示 | 0.3d | 2011-08-15 13:00 | 2011-08-15 15:24 | 97 | 4.2d |  |  | 樊志霞 | 2.4h |
