# 开发组近期开发计划-201109

Schedule from MS Project, 2011-07-18 to 2011-10-03, A marks actual dates.
hualu

## Calendars

- 标准: Mon-Fri 08:00-12:00, 13:00-17:00; Sat-Sun off.

## Resources

| Resource |
| --- |
| 张远 |
| 宁桂鑫 |
| 樊志霞 |
| 田志强 |
| 蒋思玉 |
| 翟欢欢 |
| 贺传兵 |
| 范强 |
| 张亮 |
| 丹丹 |
| 王永康 |

## Schedule

| ID | WBS | Task | Duration | Start | Finish | Predecessors | Complete | Remaining | Total slack | Free slack | Constraint | Resources | Work | Actual work |
| --- | --- | --- | --- | --- | --- | --- | --- | --- | --- | --- | --- | --- | --- | --- |
| 1 | 1 | **投诉系统** | 12d? | 2011-09-02 08:00 A | 2011-09-19 17:00 |  | 4% | 11.47d? | 9.6d |  |  |  | 180h | 8h |
| 2 | 1.1 | 网络投诉页面字段控制 | 1d? | 2011-09-02 08:00 A | 2011-09-02 17:00 A |  | 100% |  |  |  | start no earlier than 2011-09-02 08:00 | 翟欢欢 | 8h | 8h |
| 3 | 1.2 | 申诉单现象分类打标 | 3d | 2011-09-02 08:00 | 2011-09-06 17:00 |  |  |  | 11d | 0d | start no earlier than 2011-09-02 08:00 | 翟欢欢 | 24h |  |
| 4 | 1.3 | 申诉单回复 | 3d | 2011-09-07 08:00 | 2011-09-09 17:00 | 3 |  |  | 11d |  |  | 翟欢欢 | 24h |  |
| 5 | 1.4 | 申诉单投诉原因分类打标 | 3d | 2011-09-02 08:00 | 2011-09-06 17:00 |  |  |  | 11d | 0d | start no earlier than 2011-09-02 08:00 | 范强 | 24h |  |
| 6 | 1.5 | 申诉单提醒 | 3d | 2011-09-07 08:00 | 2011-09-09 17:00 | 5 |  |  | 11d |  |  | 范强 | 24h |  |
| 7 | 1.6 | 申诉单调整 | 2d? | 2011-09-13 08:00 | 2011-09-14 17:00 |  |  |  | 7.6d |  | start no earlier than 2011-09-13 08:00 | 范强 | 16h |  |
| 8 | 1.7 | 申诉单增加附件上传及附件与工单关联 | 3d? | 2011-09-15 08:00 | 2011-09-19 17:00 | 7 |  |  | 7.6d |  |  | 范强 | 24h |  |
| 9 | 1.8 | 通讯录列表 | 1.5d? | 2011-09-13 08:00 | 2011-09-14 12:00 |  |  |  | 8.1d | 0d | start no earlier than 2011-09-13 08:00 | 翟欢欢 | 12h |  |
| 10 | 1.9 | 通讯录上传 | 1.5d? | 2011-09-14 13:00 | 2011-09-15 17:00 | 9 |  |  | 8.1d | 0d |  | 翟欢欢 | 12h |  |
| 11 | 1.10 | 通讯录删除 | 1.5d? | 2011-09-16 08:00 | 2011-09-19 12:00 | 10 |  |  | 8.1d |  |  | 翟欢欢 | 12h |  |
| 13 | 2 | **政企网厅** | 22d? | 2011-08-22 08:00 A | 2011-09-20 17:00 |  | 1% | 21.77d? | 8.6d |  |  |  | 234.4h | 2.4h |
| 14 | 2.1 | 网厅接口连调 | 20d? | 2011-08-22 08:00 | 2011-09-16 17:00 |  |  |  | 8.6d |  | finish no earlier than 2011-09-16 17:00 | 蒋思玉 | 160h |  |
| 15 | 2.2 | BUG-贴心系统生产环境-办理业务查询-数据没有正常显示 | 0.3d | 2011-08-30 08:00 A | 2011-08-30 10:24 A |  | 100% |  |  |  |  | 蒋思玉 | 2.4h | 2.4h |
| 16 | 2.3 | 在CRM中增加网厅系统管理员角色 | 0.5d? | 2011-09-08 08:00 | 2011-09-08 12:00 |  |  |  | 15.1d |  | start no earlier than 2011-09-08 08:00 | 蒋思玉 | 4h |  |
| 17 | 2.4 | 在CRM中增加客户账号管理中角色管理功能 | 0.5d? | 2011-09-08 08:00 | 2011-09-08 12:00 |  |  |  | 15.1d |  | start no earlier than 2011-09-08 08:00 | 蒋思玉 | 4h |  |
| 18 | 2.5 | 95588 | 8d? | 2011-09-09 08:00 | 2011-09-20 17:00 |  |  |  | 6.6d |  | finish no earlier than 2011-09-20 17:00 | 张亮 | 64h |  |
| 19 | 3 | **事件管理** | 2d? | 2011-09-08 08:00 | 2011-09-09 17:00 |  |  |  | 15.6d |  |  |  | 24h |  |
| 20 | 3.1 | 事件管理导出列表 | 1d? | 2011-09-08 08:00 | 2011-09-08 17:00 |  |  |  | 14.6d |  | start no earlier than 2011-09-08 08:00 | 宁桂鑫 | 8h |  |
| 21 | 3.2 | 解决变更单列表慢的问题 | 1d? | 2011-09-09 08:00 | 2011-09-09 17:00 | 20 |  |  | 14.6d |  |  | 宁桂鑫 | 8h |  |
| 22 | 3.3 | 事件管理导出 | 1d? | 2011-09-09 08:00 | 2011-09-09 17:00 |  |  |  | 15.6d |  | start no earlier than 2011-09-09 08:00 | 田志强 | 8h |  |
| 23 | 4 | **贵宾厅** | 37d? | 2011-07-18 08:00 | 2011-09-06 17:00 |  |  |  | 17.6d |  |  |  | 296h |  |
| 24 | 4.1 | 全国机场/车站贵宾服务新增短信认证方式 | 1d? | 2011-08-30 08:00 | 2011-08-30 17:00 |  |  |  | 22.6d |  |  | 王永康 | 8h |  |
| 25 | 4.2 | **贵宾厅积分返销** | 37d? | 2011-07-18 08:00 | 2011-09-06 17:00 |  |  |  | 18.6d |  |  |  | 288h |  |
| 26 | 4.2.1 | **数据定时核对功能** | 24d? | 2011-07-18 08:00 | 2011-08-18 17:00 |  |  |  | 25.6d |  |  |  | 192h |  |
| 27 | 4.2.1.1 | 从FTP下载数据核对文件 | 2d | 2011-07-18 08:00 | 2011-07-19 17:00 |  |  |  | 24.6d | 0d | start no earlier than 2011-07-18 08:00 | 贺传兵 | 16h |  |
| 28 | 4.2.1.2 | 记录下载日志 | 1d? | 2011-07-20 08:00 | 2011-07-20 17:00 | 27 |  |  | 24.6d | 0d |  | 贺传兵 | 8h |  |
| 29 | 4.2.1.3 | 解析数据核对文件内容 | 3d? | 2011-07-21 08:00 | 2011-07-25 17:00 | 28 |  |  | 24.6d | 0d |  | 贺传兵 | 24h |  |
| 30 | 4.2.1.4 | 核对数据核对文件内容 | 3d? | 2011-07-26 08:00 | 2011-07-28 17:00 | 29 |  |  | 24.6d | 0d |  | 贺传兵 | 24h |  |
| 31 | 4.2.1.5 | 记录核对结果 | 3.5d? | 2011-07-29 08:00 | 2011-08-03 12:00 | 30 |  |  | 24.6d | 0d |  | 贺传兵 | 28h |  |
| 32 | 4.2.1.6 | 发起返销请求、记录返销结果 | 3d? | 2011-08-03 13:00 | 2011-08-08 12:00 | 31 |  |  | 24.6d | 0d |  | 贺传兵 | 24h |  |
| 33 | 4.2.1.7 | 发起重新扣减请求、记录重新扣减结果 | 3.5d? | 2011-08-08 13:00 | 2011-08-11 17:00 | 32 |  |  | 24.6d | 0d |  | 贺传兵 | 28h |  |
| 34 | 4.2.1.8 | 修改日志表 | 1d? | 2011-08-12 08:00 | 2011-08-12 17:00 | 33 |  |  | 24.6d | 0d |  | 贺传兵 | 8h |  |
| 35 | 4.2.1.9 | 生成数据综合处理结果文件 | 2d? | 2011-08-15 08:00 | 2011-08-16 17:00 | 34 |  |  | 24.6d | 0d |  | 贺传兵 | 16h |  |
| 36 | 4.2.1.10 | 上传数据综合处理结果文件 | 2d? | 2011-08-17 08:00 | 2011-08-18 17:00 | 35 |  |  | 24.6d | 0d |  | 贺传兵 | 16h |  |

| ID | WBS | Task | Duration | Start | Finish | Predecessors | Complete | Remaining | Total slack | Free slack | Constraint | Resources | Work | Actual work |
| --- | --- | --- | --- | --- | --- | --- | --- | --- | --- | --- | --- | --- | --- | --- |
| 37 | 4.2.2 | **人工核对功能功能** | 6d? | 2011-08-30 08:00 | 2011-09-06 17:00 |  |  |  | 17.6d |  |  |  | 48h |  |
| 38 | 4.2.2.1 | 界面功能实现 | 2d? | 2011-08-30 08:00 | 2011-08-31 17:00 |  |  |  | 17.6d | 0d |  | 丹丹 | 16h |  |
| 39 | 4.2.2.2 | 上传数据核对文件 | 2d? | 2011-09-01 08:00 | 2011-09-02 17:00 | 38 |  |  | 17.6d | 0d |  | 丹丹 | 16h |  |
| 40 | 4.2.2.3 | 调用定时核对功能 | 2d? | 2011-09-05 08:00 | 2011-09-06 17:00 | 39 |  |  | 17.6d |  |  | 丹丹 | 16h |  |
| 41 | 4.2.3 | **返销执行结果查询功能** | 6d | 2011-08-19 08:00 | 2011-08-26 17:00 |  |  |  | 24.6d |  |  |  | 48h |  |
| 42 | 4.2.3.1 | 返销执行结果查询列表 | 2d | 2011-08-19 08:00 | 2011-08-22 17:00 | 36 |  |  | 24.6d | 0d |  | 贺传兵 | 16h |  |
| 43 | 4.2.3.2 | 返销执行结果查询 | 2d | 2011-08-23 08:00 | 2011-08-24 17:00 | 42 |  |  | 24.6d | 0d |  | 贺传兵 | 16h |  |
| 44 | 4.2.3.3 | 导出查询结果 | 2d | 2011-08-25 08:00 | 2011-08-26 17:00 | 43 |  |  | 24.6d |  |  | 贺传兵 | 16h |  |
| 45 | 5 | **商机** | 17d? | 2011-08-25 08:00 A | 2011-09-16 17:00 |  | 64% | 6.12d? | 9.6d |  |  |  | 200h | 128h |
| 46 | 5.1 | **普通商机** | 17d? | 2011-08-25 08:00 A | 2011-09-16 17:00 |  | 57% | 7.29d? | 10.6d |  |  |  | 168h | 96h |
| 47 | 5.1.1 | **顾问式营销团队** | 6d | 2011-08-25 08:00 A | 2011-09-01 17:00 A |  | 100% |  |  |  |  |  | 96h | 96h |
| 48 | 5.1.1.1 | 顾问式营销团队管理功能 | 1d | 2011-08-25 08:00 A | 2011-08-25 17:00 A |  | 100% |  |  |  | start no earlier than 2011-08-22 08:00 | 樊志霞 | 8h | 8h |
| 49 | 5.1.1.2 | 新建商机增加字段 | 1d | 2011-08-26 08:00 A | 2011-08-26 17:00 A | 48 | 100% |  |  |  | finish no earlier than 2011-08-19 17:00 | 樊志霞 | 8h | 8h |
| 50 | 5.1.1.3 | 修改商机增加字段 | 1d | 2011-08-29 08:00 A | 2011-08-29 17:00 A | 49 | 100% |  |  |  | start no earlier than 2011-08-19 08:00 | 樊志霞 | 8h | 8h |
| 51 | 5.1.1.4 | 商机查询修改 | 1d | 2011-08-30 08:00 A | 2011-08-30 17:00 A | 50 | 100% |  |  |  | finish no earlier than 2011-08-19 17:00 | 樊志霞 | 8h | 8h |
| 52 | 5.1.1.5 | 商机列表修改 | 1d | 2011-08-31 08:00 A | 2011-08-31 17:00 A | 51 | 100% |  |  |  | start no earlier than 2011-08-17 08:00 | 樊志霞 | 8h | 8h |
| 53 | 5.1.1.6 | 商机信息详细功能修改 | 1d | 2011-09-01 08:00 A | 2011-09-01 17:00 A | 52 | 100% |  |  |  |  | 樊志霞 | 8h | 8h |
| 54 | 5.1.1.7 | 修改商机导出和导入 | 6d | 2011-08-25 08:00 A | 2011-09-01 17:00 A |  | 100% |  |  |  | start no earlier than 2011-08-29 08:00 | 田志强 | 48h | 48h |
| 55 | 5.1.2 | **首席试点客户关系调整** | 6d? | 2011-09-09 08:00 | 2011-09-16 17:00 |  |  |  | 9.6d |  |  |  | 72h |  |
| 56 | 5.1.2.1 | **纵向一体化团队** | 3d? | 2011-09-13 08:00 | 2011-09-15 17:00 |  |  |  | 10.6d |  |  |  | 24h |  |
| 57 | 5.1.2.1.1 | 我的纵向一体化团队 | 1d? | 2011-09-13 08:00 | 2011-09-13 17:00 |  |  |  | 10.6d | 0d | start no earlier than 2011-09-13 08:00 | 樊志霞 | 8h |  |
| 58 | 5.1.2.1.2 | 我管理的纵向一体化团队 | 1d? | 2011-09-14 08:00 | 2011-09-14 17:00 | 57 |  |  | 10.6d | 0d |  | 樊志霞 | 8h |  |
| 59 | 5.1.2.1.3 | 所有纵向一体化团队 | 1d? | 2011-09-15 08:00 | 2011-09-15 17:00 | 58 |  |  | 10.6d |  |  | 樊志霞 | 8h |  |
| 60 | 5.1.2.2 | **首席客户关系管理** | 6d? | 2011-09-09 08:00 | 2011-09-16 17:00 |  |  |  | 9.6d |  |  |  | 40h |  |
| 61 | 5.1.2.2.1 | 首席客户关系信息 | 1d? | 2011-09-09 08:00 | 2011-09-09 17:00 |  |  |  | 14.6d |  | start no earlier than 2011-09-09 08:00 | 田志强 | 8h |  |
| 62 | 5.1.2.2.2 | 我提交的首席客户关系变更 | 1d? | 2011-09-13 08:00 | 2011-09-13 17:00 |  |  |  | 9.6d | 0d | start no earlier than 2011-09-13 08:00 | 田志强 | 8h |  |
| 63 | 5.1.2.2.3 | 待我初审核的变更 | 1d? | 2011-09-14 08:00 | 2011-09-14 17:00 | 62 |  |  | 9.6d | 0d |  | 田志强 | 8h |  |
| 64 | 5.1.2.2.4 | 待我终审的变更 | 1d? | 2011-09-15 08:00 | 2011-09-15 17:00 | 63 |  |  | 9.6d | 0d |  | 田志强 | 8h |  |
| 65 | 5.1.2.2.5 | 所有首席变更 | 1d? | 2011-09-16 08:00 | 2011-09-16 17:00 | 64 |  |  | 9.6d |  |  | 田志强 | 8h |  |

| ID | WBS | Task | Duration | Start | Finish | Predecessors | Complete | Remaining | Total slack | Constraint | Resources | Work | Actual work |
| --- | --- | --- | --- | --- | --- | --- | --- | --- | --- | --- | --- | --- | --- |
| 66 | 5.1.2.3 | **统计报表** | 1d? | 2011-09-16 08:00 | 2011-09-16 17:00 |  |  |  | 9.6d |  |  | 8h |  |
| 67 | 5.1.2.3.1 | 统计报表 | 1d? | 2011-09-16 08:00 | 2011-09-16 17:00 |  |  |  | 9.6d | start no earlier than 2011-09-16 08:00 | 樊志霞 | 8h |  |
| 68 | 5.2 | **海外商机** | 1d? | 2011-09-01 08:00 A | 2011-09-01 17:00 A |  | 100% |  |  |  |  | 32h | 32h |
| 69 | 5.2.1 | BUG-海外商机新建，填写竞争对手的【其他】内容后，保存该商机，页面中内容会在内容前显示分号; | 1d? | 2011-09-01 08:00 A | 2011-09-01 17:00 A |  | 100% |  |  | finish no earlier than 2011-09-01 17:00 | 贺传兵 | 8h | 8h |
| 70 | 5.2.2 | BUG-新建商机，点击【新建】，点击右上角收缩栏，页面应该全部展开; | 1d? | 2011-09-01 08:00 A | 2011-09-01 17:00 A |  | 100% |  |  | finish no earlier than 2011-09-01 17:00 | 贺传兵 | 8h | 8h |
| 71 | 5.2.3 | BUG-海外商机中，商机状态修改为【已签约】后，新建合同，网速过慢或者双击合同页面中【保存】情况下，会出现两条一样的合同信息，请给予限制。合同编号是唯一的，不可以重复，请修改。 | 1d? | 2011-09-01 08:00 A | 2011-09-01 17:00 A |  | 100% |  |  | finish no earlier than 2011-09-01 17:00 | 贺传兵 | 8h | 8h |
| 72 | 5.2.4 | BUG-不修改协同单情况下，一直新建多个协同不会报错。如果修改一条协同申请，再为该商机新建协同，填写完内容保存后，就会报错。 | 1d? | 2011-09-01 08:00 A | 2011-09-01 17:00 A |  | 100% |  |  | finish no earlier than 2011-09-01 17:00 | 贺传兵 | 8h | 8h |
| 74 | 6 | **UAM** | 17d? | 2011-09-02 08:00 A | 2011-09-26 17:00 |  | 14% | 14.61d? | 3.6d |  |  | 568h | 80h |
| 75 | 6.1 | 1、集团网厅SSO到省网厅,与各省连调 | 10d? | 2011-09-02 08:00 A | 2011-09-15 17:00 A |  | 100% |  |  | finish no earlier than 2011-09-15 17:00 | 宁桂鑫 | 80h | 80h |
| 76 | 6.2 | 2、集团网厅SSO到业务平台 | 7d? | 2011-09-16 08:00 | 2011-09-26 17:00 |  |  |  | 3.6d | finish no earlier than 2011-09-26 17:00 | 宁桂鑫 | 56h |  |
| 77 | 6.3 | 3、省网厅SSO到集团网厅 | 13d? | 2011-09-02 08:00 | 2011-09-20 17:00 |  |  |  | 7.6d | finish no earlier than 2011-09-20 17:00 | 宁桂鑫 | 104h |  |
| 78 | 6.4 | 4、省网厅SSO到业务平台 | 10d? | 2011-09-02 08:00 | 2011-09-15 17:00 |  |  |  | 10.6d | finish no earlier than 2011-09-15 17:00 | 宁桂鑫 | 80h |  |
| 79 | 6.5 | 5、业务平台SSO到集团网厅 | 7d? | 2011-09-16 08:00 | 2011-09-26 17:00 |  |  |  | 3.6d | finish no earlier than 2011-09-26 17:00 | 宁桂鑫 | 56h |  |
| 80 | 6.6 | 6、业务平台SSO到省网厅 | 10d? | 2011-09-02 08:00 | 2011-09-15 17:00 |  |  |  | 10.6d | finish no earlier than 2011-09-15 17:00 | 宁桂鑫 | 80h |  |
| 81 | 6.7 | 7、省网厅到IM平台 | 7d? | 2011-09-02 08:00 | 2011-09-12 17:00 |  |  |  | 13.6d | finish no earlier than 2011-09-12 17:00 | 宁桂鑫 | 56h |  |
| 82 | 6.8 | 8、IM平台到省网厅 | 7d? | 2011-09-02 08:00 | 2011-09-12 17:00 |  |  |  | 13.6d | finish no earlier than 2011-09-12 17:00 | 宁桂鑫 | 56h |  |
| 84 | 7 | **ICT** | 20.6d? | 2011-09-05 08:00 | 2011-10-03 13:48 |  |  |  | 0d |  |  | 164.8h |  |
| 85 | 7.1 | **新需求** | 8d? | 2011-09-05 08:00 | 2011-09-14 17:00 |  |  |  | 0d |  |  | 64h |  |
| 86 | 7.1.1 | 项目计划，ICT订单关联，多个ICT节点对应同一个电路流水 | 1d? | 2011-09-05 08:00 | 2011-09-05 17:00 |  |  |  | 0d | start no earlier than 2011-09-05 08:00 | 张远 | 8h |  |
| 87 | 7.1.2 | ICT订单列表增加字段，修改显示规则及数据过滤规则，对数据创建时间进行到序排列 | 1d? | 2011-09-06 08:00 | 2011-09-06 17:00 | 86 |  |  | 0d |  | 张远 | 8h |  |
| 88 | 7.1.3 | 项目计划，项目流程设计中完成时间改为系统自动计算，并调整位置 | 1d? | 2011-09-07 08:00 | 2011-09-07 17:00 | 87 |  |  | 0d |  | 张远 | 8h |  |
| 89 | 7.1.4 | 项目收尾，新建验收通知页面增加显示字段 | 1d? | 2011-09-08 08:00 | 2011-09-08 17:00 | 88 |  |  | 0d |  | 张远 | 8h |  |
| 90 | 7.1.5 | 项目计划，ICT订单关联，点击导入到项目后，项目编号输入和搜索两个窗口合并为一个 | 1d? | 2011-09-09 08:00 | 2011-09-09 17:00 | 89 |  |  | 0d |  | 张远 | 8h |  |
| 91 | 7.1.6 | 项目管控，项目进度查询，增加按项目经理查询 | 1d? | 2011-09-12 08:00 | 2011-09-12 17:00 | 90 |  |  | 0d |  | 张远 | 8h |  |
| 92 | 7.1.7 | 项目启动，团队建设通知单提交，点击新建选择项目编号后弹出的项目列表窗口，按照项目创建时间倒序排列 | 1d? | 2011-09-13 08:00 | 2011-09-13 17:00 | 91 |  |  | 0d |  | 张远 | 8h |  |
| 93 | 7.1.8 | 项目计划，电路信息导入，页面初始化速度优化 | 1d? | 2011-09-14 08:00 | 2011-09-14 17:00 | 92 |  |  | 0d | start no earlier than 2011-09-13 08:00 | 张远 | 8h |  |

| ID | WBS | Task | Duration | Start | Finish | Predecessors | Total slack | Resources | Work |
| --- | --- | --- | --- | --- | --- | --- | --- | --- | --- |
| 94 | 7.2 | **遗留BUG** | 12.6d | 2011-09-15 08:00 | 2011-10-03 13:48 |  | 0d |  | 100.8h |
| 95 | 7.2.1 | 1.项目启动->在填写完团队名单后，在组织架构图中显示的联系方式中手机和邮箱信息显示不正确。但是在项目成员通讯录中的显示是正确的。 | 0.3d | 2011-09-15 08:00 | 2011-09-15 10:24 | 93 | 0d | 张远 | 2.4h |
| 96 | 7.2.2 | 2.项目启动->保存团队名单联系方式时，填写所属部门字数>=7个汉字时报错，无法保存，而且错误无指导性提示 | 0.3d | 2011-09-15 10:24 | 2011-09-15 13:48 | 95 | 0d | 张远 | 2.4h |
| 97 | 7.2.3 | 3.项目计划->实施任务单派发->上传附件保存不上，而且上传某些文档显示上传失败（没有规律性），但同时弹出提示框现实保存成功；附件上传成功再点击上传附件查看附件列表为空。每次点击实施任务单查看附件都需要重新点击项目流水进行刷新才能看待实施任务单中的附件列表。删除附件也存在这个问题；实施任务单附件上传后，文件名有些汉字无法显示或出现漏字或丢字. | 0.3d | 2011-09-15 13:48 | 2011-09-15 16:12 | 96 | 0d | 张远 | 2.4h |
| 98 | 7.2.4 | 4.实施方案无法正常打开，项目计划，我的计划中，项目编号JT20110216 点击实施方案时会检测本机的doc默认打开软件，不同软件打开项目实施方案是的结果不同 | 0.3d | 2011-09-15 16:12 | 2011-09-16 09:36 | 97 | 0d | 张远 | 2.4h |
| 99 | 7.2.5 | 5.在ICT项目管理——》综合查询——》实施任务单查询——》反馈明细 界面单号：JT20110117-0009 ，环节名称：约定上门安装 反馈时候 报错 ，在综合查询中是不应该允许反馈的 | 0.3d | 2011-09-16 09:36 | 2011-09-16 12:00 | 98 | 0d | 张远 | 2.4h |
| 100 | 7.2.6 | 6.Title 搜索窗口点击清除按钮没有直接清除信息 | 0.3d | 2011-09-16 13:00 | 2011-09-16 15:24 | 99 | 0d | 张远 | 2.4h |
| 101 | 7.2.7 | 7.Title 关闭或者取消新增项目界面提示信息没有取消功能 | 0.3d | 2011-09-16 15:24 | 2011-09-19 08:48 | 100 | 0d | 张远 | 2.4h |
| 102 | 7.2.8 | 8.Title 新增项目特殊字符没有过滤 | 0.3d | 2011-09-19 08:48 | 2011-09-19 11:12 | 101 | 0d | 张远 | 2.4h |
| 103 | 7.2.9 | 9.Title 查询项目界面点击查询在查询条件处出现“%”符号 | 0.3d | 2011-09-19 11:12 | 2011-09-19 14:36 | 102 | 0d | 张远 | 2.4h |
| 104 | 7.2.10 | 10.Title协调任务单新增界面项目编号查询部分字段不支持全模糊查询 | 0.3d | 2011-09-19 14:36 | 2011-09-19 17:00 | 103 | 0d | 张远 | 2.4h |
| 105 | 7.2.11 | 11.Title 协调任务单新增一条信息菜单栏没有显示新增 | 0.3d | 2011-09-20 08:00 | 2011-09-20 10:24 | 104 | 0d | 张远 | 2.4h |
| 106 | 7.2.12 | 12.Title 协调任务单不能下载模板 | 0.3d | 2011-09-20 10:24 | 2011-09-20 13:48 | 105 | 0d | 张远 | 2.4h |
| 107 | 7.2.13 | 13.Title 协调任务单数据导入失败 | 0.3d | 2011-09-20 13:48 | 2011-09-20 16:12 | 106 | 0d | 张远 | 2.4h |
| 108 | 7.2.14 | 14.Title 协调任务单word文档也可导入 | 0.3d | 2011-09-20 16:12 | 2011-09-21 09:36 | 107 | 0d | 张远 | 2.4h |
| 109 | 7.2.15 | 15.Title 团队关系中删除一条数据后翻页失效 | 0.3d | 2011-09-21 09:36 | 2011-09-21 12:00 | 108 | 0d | 张远 | 2.4h |
| 110 | 7.2.16 | 16.Title 周报管理新增页面报错 | 0.3d | 2011-09-21 13:00 | 2011-09-21 15:24 | 109 | 0d | 张远 | 2.4h |
| 111 | 7.2.17 | 17.Title word导出字段与标题字段不一致 | 0.3d | 2011-09-21 15:24 | 2011-09-22 08:48 | 110 | 0d | 张远 | 2.4h |
| 112 | 7.2.18 | 18.Title 项目进度查询报脚本错误 | 0.3d | 2011-09-22 08:48 | 2011-09-22 11:12 | 111 | 0d | 张远 | 2.4h |
| 113 | 7.2.19 | 19.Title 修改实施任务单，要求完成时间为必填项 | 0.3d | 2011-09-22 11:12 | 2011-09-22 14:36 | 112 | 0d | 张远 | 2.4h |
| 114 | 7.2.20 | 20.Title 点击电路单详情全选功能上方Tab页消失 | 0.3d | 2011-09-22 14:36 | 2011-09-22 17:00 | 113 | 0d | 张远 | 2.4h |
| 115 | 7.2.21 | 21.Title 任务单反馈告警预警信息勾选保存无效 | 0.3d | 2011-09-23 08:00 | 2011-09-23 10:24 | 114 | 0d | 张远 | 2.4h |
| 116 | 7.2.22 | 22.Title 新问题提交订单详情页面报错 | 0.3d | 2011-09-23 10:24 | 2011-09-23 13:48 | 115 | 0d | 张远 | 2.4h |
| 117 | 7.2.23 | 23.Title 进度反馈中任务单详情界面报错 | 0.3d | 2011-09-23 13:48 | 2011-09-23 16:12 | 116 | 0d | 张远 | 2.4h |
| 118 | 7.2.24 | 24.Title 项目进度查询 | 0.3d | 2011-09-23 16:12 | 2011-09-26 09:36 | 117 | 0d | 张远 | 2.4h |
| 119 | 7.2.25 | 25.Title 项目成员变更出现乱码 | 0.3d | 2011-09-26 09:36 | 2011-09-26 12:00 | 118 | 0d | 张远 | 2.4h |
| 120 | 7.2.26 | 26.Title 风险管理信息保存后在项目进度查询中无显示 | 0.3d | 2011-09-26 13:00 | 2011-09-26 15:24 | 119 | 0d | 张远 | 2.4h |
| 121 | 7.2.27 | 27.Title 协调任务单查询中要求完成日期、创建日期和接单日期查询失效 | 0.3d | 2011-09-26 15:24 | 2011-09-27 08:48 | 120 | 0d | 张远 | 2.4h |
| 122 | 7.2.28 | 28.Title 详细查询界面滚动条拖拽无效 | 0.3d | 2011-09-27 08:48 | 2011-09-27 11:12 | 121 | 0d | 张远 | 2.4h |
| 123 | 7.2.29 | 29.Title 查看电路信息界面查询条件有装机地址，列表中没有该字段 | 0.3d | 2011-09-27 11:12 | 2011-09-27 14:36 | 122 | 0d | 张远 | 2.4h |
| 124 | 7.2.30 | 30.Title 协调任务单关联电路订单搜索速度很慢 | 0.3d | 2011-09-27 14:36 | 2011-09-27 17:00 | 123 | 0d | 张远 | 2.4h |
| 125 | 7.2.31 | 31.Title 实施任务单详情不显示创建人和流水编号 | 0.3d | 2011-09-28 08:00 | 2011-09-28 10:24 | 124 | 0d | 张远 | 2.4h |
| 126 | 7.2.32 | 32.Title 电路信息列表中全选按钮只能点击一次 | 0.3d | 2011-09-28 10:24 | 2011-09-28 13:48 | 125 | 0d | 张远 | 2.4h |
| 127 | 7.2.33 | 33.Title 导入电路列表显示50或100条信息没有滚动条 | 0.3d | 2011-09-28 13:48 | 2011-09-28 16:12 | 126 | 0d | 张远 | 2.4h |
| 128 | 7.2.34 | 34.Title 问题处理反馈无信息显示 | 0.3d | 2011-09-28 16:12 | 2011-09-29 09:36 | 127 | 0d | 张远 | 2.4h |
| 129 | 7.2.35 | 35.Title 实施方案发布失败 | 0.3d | 2011-09-29 09:36 | 2011-09-29 12:00 | 128 | 0d | 张远 | 2.4h |
| 130 | 7.2.36 | 36.Title 项目进度查询中可派发团队建设通知单 | 0.3d | 2011-09-29 13:00 | 2011-09-29 15:24 | 129 | 0d | 张远 | 2.4h |
| 131 | 7.2.37 | 37.Title 点击树状菜单偶现表格不存在错误 | 0.3d | 2011-09-29 15:24 | 2011-09-30 08:48 | 130 | 0d | 张远 | 2.4h |
| 132 | 7.2.38 | 38.Title 团队关系逻辑错误时错误提示不明确 | 0.3d | 2011-09-30 08:48 | 2011-09-30 11:12 | 131 | 0d | 张远 | 2.4h |
| 133 | 7.2.39 | 39.Title 点击上传附件偶现报脚本错误 | 0.3d | 2011-09-30 11:12 | 2011-09-30 14:36 | 132 | 0d | 张远 | 2.4h |
| 134 | 7.2.40 | 40.Title 验收通知单审核不通过原因无法显示 | 0.3d | 2011-09-30 14:36 | 2011-09-30 17:00 | 133 | 0d | 张远 | 2.4h |
| 135 | 7.2.41 | 41.Title 项目经理审核项目不通过退回后仍然可以看到被退回的项目 | 0.3d | 2011-10-03 08:00 | 2011-10-03 10:24 | 134 | 0d | 张远 | 2.4h |
| 136 | 7.2.42 | 42.Title 省用户在协调任务单查询中不能看到全省数据 | 0.3d | 2011-10-03 10:24 | 2011-10-03 13:48 | 135 | 0d | 张远 | 2.4h |

Notes:
- 98: 实施方案无法正常打开，项目计划，我的计划中，项目编号JT20110216 点击实施方案时会检测本机的doc默认打开软件，不同软件打开项目实施方案是的结果不同： / 1.office2007 / 点击是报如下错误，点击确定后无法编辑实施方案 / 2.office2003 / 单机项目方案时显示无法启用转化器，点击确认后出来可编辑的doc文件 / 3.wps / 点击是提示此窗口，点击确认后提示不支持wps文档，无法打开项目实施方案 / 4.项目方案编辑器初始化页面文件不是空白页面，里边的内容不知道是怎么出来的（已经跟用户确认过不是由用户填写的）
- 100: Title 搜索窗口点击清除按钮没有直接清除信息 / Priority M / Step / 1.点击项目建立 / 2.点击新增 / 3.点击客户编号查询 / 4.输入信息点击清除 / Result / 先查询输入的信息再清除文字 / Expect / 直接清除输入的文字
- 101: Title 关闭或者取消新增项目界面提示信息没有取消功能 / Priority L / Step / 1.点击项目建立 / 2.点击新增 / 3.关闭该界面或者点击取消按钮 / Result / 点击确定和X都将关闭窗口，此信息只起到提示作用，不能阻止误操作 / Expect 建议加上取消按钮
- 102: Title 新增项目特殊字符没有过滤 / Priority L / Step / 1.点击项目建立 / 2.点击新增 / 3.在项目名称中输入 / Result / 可以正常保存，显示信息为空白 / Expect / 建议过滤特殊字符
- 103: Title 查询项目界面点击查询在查询条件处出现%符号 / Priority M / Step / 1. 点击项目建立 / 2. 点击查询 / 3．输入条件点击查询 / Result （图见备注） / Expect / 去掉%，其它模块也如此
- 104: Title协调任务单新增界面项目编号查询部分字段不支持全模糊查询 / Priority M / Step / 1.点击项目建立 / 2.点击协调任务单提交 / 3.点击新增 / 4.点击项目编号查询 / Result / 项目编号和客户名称不支持模糊查询 / Expect / 所有查询条件都支持模糊查询
- 105: Title 协调任务单新增一条信息菜单栏没有显示新增 / Priority H / Step / 1. 点击协调任务单提交 / 2. 点击新增，新增一条信息 / Result / 菜单栏显示信息数为2，实际信息数位3，需要点击一下标题才可刷新数据 / Expect / 新增信息后，数字提示+1，其它模块也如此 图见备注
- 106: Title 协调任务单不能下载模板 / Priority H / Step / 1. 点击协调任务单提交 / 2. 点击导入 / 3. 点击下载模板 / Result / 不能下载 / 该格式文件不能直接被上传 / Expect 能正常下载模板
- 107: Title 协调任务单数据导入失败 / Priority H / Step / 1. 点击协调任务单提交 / 2. 点击导入 / 3. 点击下载模板 / 4. 输入正确的数据，保存为正确格式，导入后点击提交 / Result / 提示保存成功，但是数据没有被添加 / Expect 在列表中显示导入的数据
- 108: Title 协调任务单word文档也可导入 / Priority M / Step / 1. 点击协调任务单提交 / 2. 点击导入 / 3. 选择word文档点击提交 / Result / 提示如下： / 提示上传成功 / Expect 只可上传excel文档
- 109: Title 团队关系中删除一条数据后翻页失效 / Priority H / Step / 1. 点击项目启动 / 2. 点击组织架构设定 / 3. 选择一个项目，团队关系有分页显示的，删除一条数据 / 4. 点击下一页 / Result / 翻页功能失效，只显示默认的数据 / Expect 正常显示数据
- 110: Title 周报管理新增页面报错 / Priority H / Step / 1. 点击项目管控 / 2. 点击周报管理 / 3. 点击新增 / 4. 点击保存 / Result 见备注图 / Expect / 可以添增新的信息
- 111: Title word导出字段与标题字段不一致 / Priority M / Step / 1.点击项目管控 / 2.点击周报管理 / 3.点击word导出 / Result / 导出word标题与界面标题不一致，缺少资源投入情况字段 / Expect / 建议字段保持一致
- 112: Title 项目进度查询报脚本错误 / Priority H / Step / 1. 点击项目进度查询 / 2. 选择一个项目点击项目编号 / 3. 勾选是否重大或创新型项目 / Result 见备注图 / Expect 界面正常
- 113: Title 修改实施任务单，要求完成时间为必填项 / Priority H / Step / 1. 点击实施任务单派发 / 2. 选择一个没有完成日期的任务单点击修改 / Result / 要求完成时间为必填项，因其无法输入，导致修改信息无法保存 / Expect / 建议类似问题可保存
- 114: Title 点击电路单详情全选功能上方Tab页消失 / Priority H / Step / 1. 点击项目实施 / 2. 点击实施任务单接单 / 3. 选中一个任务单，点击下方的电路单详情 / 4. 点击全选 / Result / 上方的Tab页消失 / Expect 点击全选按钮Tab页不消失
- 115: Title 任务单反馈告警预警信息勾选保存无效 / Priority H / Step / 1. 点击项目实施 / 2. 点击实施任务单反馈 / 3. 选择一条可反馈任务单点击反馈 / 4. 勾选告警、预警点击保存 / 5. 再次点击反馈 / Result / 之前勾选的信息没有被保存 / Expect 勾选信息可被保存
- 116: Title 新问题提交订单详情页面报错 / Priority H / Step / 1. 点击项目实施 / 2. 点击新问题提交 / 3. 在任务单列表中点击任务单编号 / 4. 点击订单详情 / Result（见备注图） / Expect 页面正常显示
- 117: Title 进度反馈中任务单详情界面报错 / Priority H / Step / 1. 点击项目实施 / 2. 点击进度反馈 / 3. 选择一条任务单点击查看任务单详情 / Result / Expect 界面正常显示
- 118: Title 项目进度查询 / Priority M / Step / 1. 点击项目管控 / 2. 点击项目进度查询 / 3. 选择一个项目点击团队建设通知单 / 4. 选择一条团队建设通知单点击查看反馈信息 / 5. 点击查询 / Result / 团队一项会显示很多数据（见备注图） / Expect 查询条件团队显示的数据与该团队通知单相符
- 119: Title 项目成员变更出现乱码 / Priority H / Step / 1. 点击项目管控 / 2. 点击项目成员变更申请 / Result 提交和保存按钮出现乱码 / Expect 正常提交
- 120: Title 风险管理信息保存后在项目进度查询中无显示 / Priority H / Step / 1. 点击项目管控 / 2. 点击风险管理 / 3. 点击新增，输入信息点击保存 / Result / 输入的信息在项目进度查询中的风险信息没有显示 / Expect 可正常显示
- 121: Title 协调任务单查询中要求完成日期、创建日期和接单日期查询失效 / Priority M / Step / 1. 点击综合查询 / 2. 点击协调任务单查询 / 3. 点击详细查询 / Result / 完成日期、创建日期和接单日期查询失效 / Expect 上述三个查询条件可用
- 122: Title 详细查询界面滚动条拖拽无效 / Priority M / Step / 1. 点击综合查询 / 2. 点击项目查询 / 3. 点击详细查询 / Result / 滚动条拖拽无效 / Expect 可拖拽
- 123: Title 查看电路信息界面查询条件有装机地址，列表中没有该字段 / Priority H / Step / 1. 点击项目计划 / 2. 点击电路信息导入 / 3. 点击查看电路信息 / 4. 点击查询 / Result / 查询条件为装机地址，电路信息列表中并没有装机地址字段。
- 124: Title 协调任务单关联电路订单搜索速度很慢 / Priority H / Step / 1.点击项目建立 / 2.点击协调任务单提交 / 3.点击新增 / 4.点击关联电路订单的搜索 / Result / 搜索速度很慢（分钟级） / Expect 速度相对提高
- 125: Title 实施任务单详情不显示创建人和流水编号 / Priority M / Step / 1. 点击项目收尾 / 2. 点击所有验收通知单 / 3. 选择一个项目点击任务单编号 / Result 不显示创建人和流水号 / Expect 显示创建人和流水编号
- 126: Title 电路信息列表中全选按钮只能点击一次 / Priority M / Step / 1. 点击项目计划 / 2. 点击电路信息导入 / 3. 点击查看电路信息 / 4. 点击全选 / Result / 点击后信息全部选中，再次点击没有反应 / Expect 再次点击取消全部选中
- 127: Title 导入电路列表显示50或100条信息没有滚动条 / Priority M / Step / 1. 点击项目计划 / 2. 点击电路信息导入 / 3. 点击导入电路 / 4. 每页显示条数选择50 / Result / 没有滚动条，下方数据无法显示 / Expect 加上滚动条
- 128: Title 问题处理反馈无信息显示 / Priority H / Step / 1. 点击项目实施 / 2. 点击问题处理反馈 / Result / 列表无数据显示 / Expect 正常显示数据
- 129: Title 实施方案发布失败 / Priority H / Step / 1. 点击项目计划 / 2. 点击我的计划 / 3. 选择一条信息点击实施方案 / 4. 点击保存文档 / Result实施方案发布失败 / Expect 能正常保存发布
- 130: Title 项目进度查询中可派发团队建设通知单 / Priority H / Step / 1. 点击项目进度查询 / 2. 选择一个项目点击团队建设通知单 / Result / 可进行派发、修改、删除操作 / Expect 项目进度查询中不能进行以上操作
- 131: Title 点击树状菜单偶现表格不存在错误 / Priority H / Result / 点击菜单有时候会出现错误提示：ID为（ec_table）的表格不存在 / Expect 点击菜单正常显示
- 132: Title 团队关系逻辑错误时错误提示不明确 / Priority H / Step / 1. 点击项目启动 / 2. 点击组织架构设定 / 3. 点击团队关系 / Result / 当新增的团队关系之间逻辑上存在问题时组织架构图会报错 / Expect 建议在添加团队关系时做校验
- 133: Title 点击上传附件偶现报脚本错误 / Priority H / Result / 上传附件按钮显示不出来的时候会报脚本错误 / Expect 正常显示
- 134: Title 验收通知单审核不通过原因无法显示 / Priority H / Step / 1. 点击项目收尾 / 2. 点击验收信息审核 / 3. 选择不通过，输入原因提交 / Result / 接单方点击不通过原因没有反应 / Expect 可正常显示不通过原因
- 135: Title 项目经理审核项目不通过退回后仍然可以看到被退回的项目 / Priority H / Step / 1. A用户建立项目提交送审核给项目经理B / 2. 项目经理B审核选择不通过，输入原因提交 / Result / 此时A用户和B用户都可看到被退回的项目并且都可进行操作 / Expect 被退回后不在项目经理处显示
- 136: Title 省用户在协调任务单查询中不能看到全省数据 / Priority H / Step / 1. 省用户登录点击综合查询 / 2. 点击协调任务单查询 / Result / 只能看到接收单位为自己的数据，不能看到下级单位的数据 / Expect 可看到全省的数据
